# Shreyas_Updated_Gnatt

Schedule from MS Project, 2023-04-03 to 2023-10-17, costs in $.

## Calendars

- Standard: Mon-Fri 08:00-12:00, 13:00-17:00; Sat-Sun off.

## Resources

| Resource | Group | Rate |
| --- | --- | --- |
| Shreyas Tekawade | Project Manager | 65 |
| Caroline Jansen | Network Engineer | 45 |
| Art Peters | Workstation Specialist | 50 |
| Isabella Smith | Infrastructure Engineer | 55 |
| Bob DeSantis | Network Integration Specialist | 42.5 |
| Nick Thomas | Network Architect | 43.75 |
| Laptops with software suite |  | 2125 |
| VoIP Handsets |  | 545 |
| Cubicle Furniture |  | 2600 |
| Kyocera High-speed Copier/Printer |  | 5075 |
| Cisco Aironet Wireless Access Points |  | 620 |
| Ciena 3926 Aggregation Switch |  | 3450 |
| Cat 6E Network Cabling |  | 480 |

## Schedule

| ID | WBS | Task | Duration | Start | Finish | Predecessors | Total slack | Resources | Work | Cost |
| --- | --- | --- | --- | --- | --- | --- | --- | --- | --- | --- |
| 1 | 1 | **Fiber Light Network Upgrade** | 141.5d | 2023-04-03 | 2023-10-17 |  | 0d |  | 1106h | 128,005 |
| 2 | 1.1 | **Project Management** | 12d | 2023-04-03 | 2023-04-18 |  | 0d |  | 72h | 4,680 |
| 3 | 1.1.1 | Develop a project plan | 16h | 2023-04-03 | 2023-04-04 |  | 0d | Shreyas Tekawade [75%] | 12h | 780 |
| 4 | 1.1.2 | Assign tasks to team members | 8h | 2023-04-05 | 2023-04-05 | 3 | 0d | Shreyas Tekawade [75%] | 6h | 390 |
| 5 | 1.1.3 | Manage the project timeline and schedule | 32h | 2023-04-06 | 2023-04-11 | 4 | 0d | Shreyas Tekawade [75%] | 24h | 1,560 |
| 6 | 1.1.4 | Track project progress and milestones | 16h | 2023-04-12 | 2023-04-13 | 5 | 0d | Shreyas Tekawade [75%] | 12h | 780 |
| 7 | 1.1.5 | Communicate project updates to stakeholders | 8h | 2023-04-14 | 2023-04-14 | 6 | 0d | Shreyas Tekawade [75%] | 6h | 390 |
| 8 | 1.1.6 | Address project risks and issues | 16h | 2023-04-17 | 2023-04-18 | 7 | 0d | Shreyas Tekawade [75%] | 12h | 780 |
| 9 | 1.2 | **Developing Office Space Infrastructure** | 95.5d | 2023-04-19 | 2023-08-30 | 2 | 0d |  | 764h | 69,620 |
| 10 | 1.2.1 | Order furniture for 12 cubicles | 4h | 2023-04-19 | 2023-04-19 |  | 0d | Isabella Smith; Cubicle Furniture [1200%] | 4h | 31,420 |
| 11 | 1.2.2 | Build cubicles that match the pre-existing Fiber Light theme | 80h | 2023-04-19 | 2023-05-03 | 10 | 0d | Art Peters | 80h | 4,000 |
| 12 | 1.2.3 | Remodel the old warehouse into a working space | 320h | 2023-05-03 | 2023-06-28 | 11 | 0d | Art Peters | 320h | 16,000 |
| 13 | 1.2.4 | Set up electrical wiring and outlets | 120h | 2023-06-28 | 2023-07-19 | 12 | 0d | Art Peters | 120h | 6,000 |
| 14 | 1.2.5 | Install lighting fixtures | 40h | 2023-07-19 | 2023-07-26 | 13 | 0d | Art Peters | 40h | 2,000 |
| 15 | 1.2.6 | Install HVAC system | 160h | 2023-07-26 | 2023-08-23 | 14 | 0d | Art Peters | 160h | 8,000 |
| 16 | 1.2.7 | Paint and decorate the walls | 40h | 2023-08-23 | 2023-08-30 | 15 | 0d | Isabella Smith | 40h | 2,200 |
| 17 | 1.3 | **Procuring Hardware and Software Inventory** | 7d | 2023-08-30 | 2023-09-08 | 9 | 0d |  | 56h | 43,945 |
| 18 | 1.3.1 | Research and select furniture supplier | 8h | 2023-08-30 | 2023-08-31 | 16 | 0d | Isabella Smith | 8h | 440 |
| 19 | 1.3.2 | Procure 12 laptop computers with Windows 11 Enterprise and Microsoft Office 365 | 16h | 2023-08-31 | 2023-09-04 | 18 | 0d | Isabella Smith; Laptops with software suite [1200%] | 16h | 26,380 |
| 20 | 1.3.3 | Procure 12 VoIP handsets with PBX connectivity | 8h | 2023-09-04 | 2023-09-05 | 19 | 0d | Isabella Smith; VoIP Handsets [1200%] | 8h | 6,980 |
| 21 | 1.3.4 | Procure Kyocera multi-functional color network printer-copier with scanning and faxing ability | 8h | 2023-09-05 | 2023-09-06 | 20 | 0d | Isabella Smith; Kyocera High-speed Copier/Printer | 8h | 5,515 |
| 22 | 1.3.5 | Purchase 16 Cat 6e cables | 8h | 2023-09-06 | 2023-09-07 | 21 | 0d | Nick Thomas; Cat 6E Network Cabling | 8h | 830 |
| 23 | 1.3.6 | Purchase Ciena 3926 aggregation switch | 8h | 2023-09-07 | 2023-09-08 | 22 | 0d | Nick Thomas; Ciena 3926 Aggregation Switch | 8h | 3,800 |
| 24 | 1.4 | **Installing and Setting up the Software and Hardware Devices** | 12d | 2023-09-08 | 2023-09-26 | 17 | 0d |  | 96h | 4,520 |
| 25 | 1.4.1 | Unbox and set up the 12 laptop computers | 12h | 2023-09-08 | 2023-09-11 | 23 | 0d | Art Peters | 12h | 600 |
| 26 | 1.4.2 | Connect the laptop computers to the network | 4h | 2023-09-12 | 2023-09-12 | 25 | 0d | Art Peters | 4h | 200 |
| 27 | 1.4.3 | Install Windows 11 Enterprise and Microsoft Office 365 on the laptop computers | 24h | 2023-09-12 | 2023-09-15 | 26 | 0d | Art Peters | 24h | 1,200 |
| 28 | 1.4.4 | Connect the 12 VoIP handsets to the existing VoIP PBX phone system | 4h | 2023-09-15 | 2023-09-15 | 27 | 0d | Caroline Jansen | 4h | 180 |
| 29 | 1.4.5 | Configure the Kyocera multi-functional color network printer-copier | 8h | 2023-09-18 | 2023-09-18 | 28 | 0d | Caroline Jansen | 8h | 360 |
| 30 | 1.4.6 | Install and configure the Ciena 3926 aggregation switch | 16h | 2023-09-19 | 2023-09-20 | 29 | 0d | Caroline Jansen | 16h | 720 |
| 31 | 1.4.7 | Connect the Cat 6e cables to the cubicles and access points | 16h | 2023-09-21 | 2023-09-22 | 30 | 0d | Caroline Jansen | 16h | 720 |
| 32 | 1.4.8 | Run the cables from the access points to the data closet | 8h | 2023-09-25 | 2023-09-25 | 31 | 0d | Caroline Jansen | 8h | 360 |
| 33 | 1.4.9 | Connect the aggregation switch to the main server room router | 4h | 2023-09-26 | 2023-09-26 | 32 | 0d | Caroline Jansen | 4h | 180 |

| ID | WBS | Task | Duration | Start | Finish | Predecessors | Total slack | Resources | Work | Cost |
| --- | --- | --- | --- | --- | --- | --- | --- | --- | --- | --- |
| 34 | 1.5 | **Quality Control and Testing** | 5d | 2023-09-26 | 2023-10-03 | 24 | 0d |  | 40h | 1,700 |
| 35 | 1.5.1 | Test the network connectivity for all 12 cubicles | 8h | 2023-09-26 | 2023-09-27 | 33 | 0d | Bob DeSantis | 8h | 340 |
| 36 | 1.5.2 | Conduct quality checks on the furniture and inventory ordered | 8h | 2023-09-27 | 2023-09-28 | 35 | 0d | Bob DeSantis | 8h | 340 |
| 37 | 1.5.3 | Perform end-to-end connectivity tests | 16h | 2023-09-28 | 2023-10-02 | 36 | 0d | Bob DeSantis | 16h | 680 |
| 38 | 1.5.4 | Verify that all hardware and software devices are functioning properly | 8h | 2023-10-02 | 2023-10-03 | 37 | 0d | Bob DeSantis | 8h | 340 |
| 39 | 1.6 | **Documentation and Training** | 10d | 2023-10-03 | 2023-10-17 | 34 | 0d |  | 78h | 3,540 |
| 40 | 1.6.1 | Create user manuals for the hardware and software devices | 16h | 2023-10-03 | 2023-10-05 | 38 | 0d | Nick Thomas | 16h | 700 |
| 41 | 1.6.2 | Document the network infrastructure and hardware configurations | 24h | 2023-10-05 | 2023-10-10 | 40 | 0d | Nick Thomas | 24h | 1,050 |
| 42 | 1.6.3 | Train the new employees on how to use the new hardware and software | 32h | 2023-10-10 | 2023-10-16 | 41 | 0d | Nick Thomas | 32h | 1,400 |
| 43 | 1.6.4 | Document project expenses and submit to accounting for tracking and billing purposes | 8h | 2023-10-16 | 2023-10-17 | 42 | 0d | Shreyas Tekawade [75%] | 6h | 390 |
